# WBS 2

Schedule from MS Project, 2022-08-15 to 2022-11-24, A marks actual dates.

## Calendars

- Standard: Mon-Fri 08:00-12:00, 13:00-17:00; Sat-Sun off.

## Resources

| Resource |
| --- |
| Dev1 |
| Dev2 |

## Schedule

| ID | WBS | Task | Type | Duration | Start | Finish | Predecessors | Complete | Remaining | Total slack | Free slack | Constraint | Resources | Work | Actual work |
| --- | --- | --- | --- | --- | --- | --- | --- | --- | --- | --- | --- | --- | --- | --- | --- |
| 1 | 1 | **Requirement Analysis** |  | 20d? | 2022-08-15 A | 2022-09-09 |  | 60% | 8d? |  |  |  |  | 320h | 192h |
| 2 | 1.1 | **Develop Project Title** |  | 1d | 2022-08-15 A | 2022-08-15 A |  | 100% |  |  |  |  |  | 16h | 16h |
| 3 | 1.1.1 | Identify Goals and Objectives |  | 1d | 2022-08-15 A | 2022-08-15 A |  | 100% |  |  |  |  | Dev1; Dev2 | 16h | 16h |
| 4 | 1.2 | **Develop Preliminary Project Scope Statement** |  | 3d | 2022-08-16 A | 2022-08-18 A | 2 | 100% |  |  |  |  |  | 48h | 48h |
| 5 | 1.2.1 | Functional Requirements |  | 1d | 2022-08-16 A | 2022-08-16 A | 3 | 100% |  |  |  |  | Dev1; Dev2 | 16h | 16h |
| 6 | 1.2.2 | Non Functional Requirements |  | 1d | 2022-08-17 A | 2022-08-17 A | 5 | 100% |  |  |  |  | Dev1; Dev2 | 16h | 16h |
| 7 | 1.2.3 | High Level Time Schedule |  | 1d | 2022-08-18 A | 2022-08-18 A | 6 | 100% |  |  |  |  | Dev1; Dev2 | 16h | 16h |
| 8 | 1.3 | **Search for information** |  | 16d? | 2022-08-19 A | 2022-09-09 | 7 | 50% | 8d? |  |  |  |  | 256h | 128h |
| 9 | 1.3.1 | Dataset Images |  | 5d | 2022-08-19 A | 2022-08-25 | 7 | 50% | 2.5d | 3d | 0d |  | Dev1; Dev2 | 80h | 40h |
| 10 | 1.3.2 | Model Ai used in this work |  | 6d | 2022-08-26 A | 2022-09-02 | 9 | 50% | 3d | 2.5d | 0d |  | Dev1; Dev2 | 96h | 48h |
| 11 | 1.3.3 | CNN model |  | 5d | 2022-09-05 A | 2022-09-09 | 10 | 50% | 2.5d | 0d |  |  | Dev1; Dev2 | 80h | 40h |
| 12 | 1.3.4 | Update Progress 2 | milestone | 0d | 2022-09-09 A | 2022-09-09 A |  | 100% |  |  |  | start no earlier than 2022-09-09 |  |  |  |
| 13 | 2 | **Design Phase & Add Dataset** |  | 30d | 2022-09-12 A | 2022-10-21 | 11 | 51% | 14.75d |  |  |  |  | 496h | 244h |
| 14 | 2.1 | UX/UI Design |  | 5d | 2022-09-12 A | 2022-09-16 |  | 50% | 2.5d | 1d | 0d |  | Dev2 | 40h | 20h |
| 15 | 2.2 | Use Case Diagram |  | 2d | 2022-09-19 A | 2022-09-20 | 14 | 50% | 1d | 24d | 0d |  | Dev2 | 16h | 8h |
| 16 | 2.3 | Database Design |  | 9d | 2022-09-21 | 2022-10-03 | 15 |  |  | 24d | 0d |  | Dev2 | 72h |  |
| 17 | 2.4 | 1st Review |  | 1d | 2022-10-04 | 2022-10-04 | 16 |  |  | 24d | 0d |  | Dev1; Dev2 | 16h |  |
| 18 | 2.5 | Object Diagram |  | 5d | 2022-10-05 | 2022-10-11 | 17 |  |  | 24d | 0d |  | Dev2 | 40h |  |
| 19 | 2.6 | Sequence Diagram |  | 5d | 2022-10-12 | 2022-10-18 | 18 |  |  | 24d | 0d |  | Dev2 | 40h |  |
| 20 | 2.7 | 2nd Review |  | 1d | 2022-10-19 | 2022-10-19 | 19 |  |  | 24d | 0d |  | Dev1; Dev2 | 16h |  |
| 21 | 2.8 | Design Phase Complete |  | 2d | 2022-10-20 | 2022-10-21 | 20 |  |  | 24d |  |  | Dev2 | 16h |  |
| 22 | 2.9 | web scraping for add image dataset |  | 30d | 2022-09-12 A | 2022-10-21 | 11SS | 90% | 3d | 24d |  |  | Dev1 | 240h | 216h |
| 23 | 3 | **Implementation** |  | 24d? | 2022-10-24 | 2022-11-24 |  |  |  |  |  |  |  | 528h |  |
| 24 | 3.1 | **Tools Study** |  | 5d | 2022-10-24 | 2022-10-28 |  |  |  | 18d | 0d |  |  | 80h |  |
| 25 | 3.1.1 | study android studio |  | 5d | 2022-10-24 | 2022-10-28 | 22SS |  |  | 18d |  |  | Dev1 | 40h |  |
| 26 | 3.1.2 | study sql |  | 5d | 2022-10-24 | 2022-10-28 | 22SS |  |  | 18d |  |  | Dev2 | 40h |  |

| ID | WBS | Task | Type | Duration | Start | Finish | Predecessors | Total slack | Free slack | Constraint | Resources | Work |
| --- | --- | --- | --- | --- | --- | --- | --- | --- | --- | --- | --- | --- |
| 27 | 3.2 | **Coding Plan** |  | 1d | 2022-10-31 | 2022-10-31 | 24 |  |  |  | Dev1; Dev2 | 48h |
| 28 | 3.2.1 | Directory setup |  | 1d | 2022-10-31 | 2022-10-31 | 24 | 18d |  |  | Dev1; Dev2 | 16h |
| 29 | 3.2.2 | Version control and GItHub setup |  | 1d | 2022-10-31 | 2022-10-31 | 24 | 18d |  |  | Dev1; Dev2 | 16h |
| 30 | 3.3 | **Basic Information Page** |  | 5d | 2022-11-01 | 2022-11-07 |  |  |  |  | Dev2 | 80h |
| 31 | 3.3.1 | Front End |  | 2d | 2022-11-01 | 2022-11-02 |  | 13d | 0d |  | Dev2 | 16h |
| 32 | 3.3.2 | Backend & API |  | 3d | 2022-11-03 | 2022-11-07 | 31 | 13d | 0d |  | Dev2 | 24h |
| 33 | 3.3.3 | Testing & Approval | milestone | 0d | 2022-11-07 | 2022-11-07 | 32 | 13d |  |  | Dev2 |  |
| 34 | 3.4 | **System 1 Take Picture** |  | 5d | 2022-11-08 | 2022-11-14 |  |  |  |  | Dev1 | 80h |
| 35 | 3.4.1 | Front End |  | 2d | 2022-11-08 | 2022-11-09 |  | 5d | 0d |  | Dev1 | 16h |
| 36 | 3.4.2 | Backend & API |  | 3d | 2022-11-10 | 2022-11-14 | 35 | 5d | 0d |  | Dev1 | 24h |
| 37 | 3.4.3 | Testing & Approval | milestone | 0d | 2022-11-14 | 2022-11-14 | 36 | 5d | 0d |  | Dev1 |  |
| 38 | 3.5 | **System 2 Model classification** |  | 3d | 2022-11-15 | 2022-11-17 |  |  |  |  | Dev1; Dev2 | 96h |
| 39 | 3.5.1 | Testing & Approval |  | 3d | 2022-11-15 | 2022-11-17 | 37 | 5d |  |  | Dev1; Dev2 | 48h |
| 40 | 3.6 | **Test Plan** |  | 4d | 2022-11-18 | 2022-11-23 |  |  |  |  | Dev1; Dev2 | 128h |
| 41 | 3.6.1 | Setup Internal Testing Team |  | 3d | 2022-11-18 | 2022-11-22 |  | 1d | 0d |  | Dev1; Dev2 | 48h |
| 42 | 3.6.2 | Review and Approve Test Plan |  | 1d | 2022-11-23 | 2022-11-23 | 41 | 1d | 0d |  | Dev1; Dev2 | 16h |
| 43 | 3.7 | **Mock Demo - First** |  | 1d | 2022-11-24 | 2022-11-24 |  |  |  |  | Dev1; Dev2 | 16h |
| 44 | 3.7.1 | First Demo Meeting | milestone | 0d | 2022-11-24 | 2022-11-24 | 42 | 1d | 0d |  | Dev1; Dev2 |  |
| 45 | 3.7.2 | Review Notes for First Mock Demo | milestone | 0d | 2022-11-24 | 2022-11-24 | 44 | 1d |  |  | Dev1; Dev2 |  |
| 46 | 4 | **Meeting with Advisor** |  | 71d | 2022-08-17 | 2022-11-23 |  | 1d |  |  |  |  |
| 47 | 4.1 | Meeting with Advisor 1 |  | 1d | 2022-08-17 | 2022-08-17 |  | 71d |  | start no earlier than 2022-08-17 |  |  |
| 48 | 4.2 | Meeting with Advisor 2 |  | 1d | 2022-08-24 | 2022-08-24 |  | 66d |  | start no earlier than 2022-08-24 |  |  |
| 49 | 4.3 | Meeting with Advisor 3 |  | 1d | 2022-08-31 | 2022-08-31 |  | 61d |  | start no earlier than 2022-08-31 |  |  |
| 50 | 4.4 | Meeting with Advisor 4 |  | 1d | 2022-09-07 | 2022-09-07 |  | 56d |  | start no earlier than 2022-09-07 |  |  |
| 51 | 4.5 | Meeting with Advisor 5 |  | 1d | 2022-09-14 | 2022-09-14 |  | 51d |  | start no earlier than 2022-09-14 |  |  |
| 52 | 4.6 | Meeting with Advisor 6 |  | 1d | 2022-09-21 | 2022-09-21 |  | 46d |  | start no earlier than 2022-09-21 |  |  |
| 53 | 4.7 | Meeting with Advisor 7 |  | 1d | 2022-09-28 | 2022-09-28 |  | 41d |  | start no earlier than 2022-09-28 |  |  |
| 54 | 4.8 | Meeting with Advisor 8 |  | 1d | 2022-10-05 | 2022-10-05 |  | 36d |  | start no earlier than 2022-10-05 |  |  |
| 55 | 4.9 | Meeting with Advisor 9 |  | 1d | 2022-10-12 | 2022-10-12 |  | 31d |  | start no earlier than 2022-10-12 |  |  |
| 56 | 4.10 | Meeting with Advisor 10 |  | 1d | 2022-10-19 | 2022-10-19 |  | 26d |  | start no earlier than 2022-10-19 |  |  |
| 57 | 4.11 | Meeting with Advisor 11 |  | 1d | 2022-10-26 | 2022-10-26 |  | 21d |  | start no earlier than 2022-10-26 |  |  |
| 58 | 4.12 | Meeting with Advisor 12 |  | 1d | 2022-11-02 | 2022-11-02 |  | 16d |  | start no earlier than 2022-11-02 |  |  |
| 59 | 4.13 | Meeting with Advisor 13 |  | 1d | 2022-11-09 | 2022-11-09 |  | 11d |  | start no earlier than 2022-11-09 |  |  |
| 60 | 4.14 | Meeting with Advisor 14 |  | 1d | 2022-11-16 | 2022-11-16 |  | 6d |  | start no earlier than 2022-11-16 |  |  |
| 61 | 4.15 | Meeting with Advisor 15 |  | 1d | 2022-11-23 | 2022-11-23 |  | 1d |  | start no earlier than 2022-11-23 |  |  |

| ID | WBS | Task | Duration | Start | Finish | Total slack | Constraint |
| --- | --- | --- | --- | --- | --- | --- | --- |
| 62 | 5 | **Daily Meeting** | 71d | 2022-08-16 | 2022-11-22 | 2d |  |
| 63 | 5.1 | Daily Meeting 1 | 1d | 2022-08-16 | 2022-08-16 | 72d | start no earlier than 2022-08-16 |
| 64 | 5.2 | Daily Meeting 2 | 1d | 2022-08-23 | 2022-08-23 | 67d | start no earlier than 2022-08-23 |
| 65 | 5.3 | Daily Meeting 3 | 1d | 2022-08-30 | 2022-08-30 | 62d | start no earlier than 2022-08-30 |
| 66 | 5.4 | Daily Meeting 4 | 1d | 2022-09-06 | 2022-09-06 | 57d | start no earlier than 2022-09-06 |
| 67 | 5.5 | Daily Meeting 5 | 1d | 2022-09-13 | 2022-09-13 | 52d | start no earlier than 2022-09-13 |
| 68 | 5.6 | Daily Meeting 6 | 1d | 2022-09-20 | 2022-09-20 | 47d | start no earlier than 2022-09-20 |
| 69 | 5.7 | Daily Meeting 7 | 1d | 2022-09-27 | 2022-09-27 | 42d | start no earlier than 2022-09-27 |
| 70 | 5.8 | Daily Meeting 8 | 1d | 2022-10-04 | 2022-10-04 | 37d | start no earlier than 2022-10-04 |
| 71 | 5.9 | Daily Meeting 9 | 1d | 2022-10-11 | 2022-10-11 | 32d | start no earlier than 2022-10-11 |
| 72 | 5.10 | Daily Meeting 10 | 1d | 2022-10-18 | 2022-10-18 | 27d | start no earlier than 2022-10-18 |
| 73 | 5.11 | Daily Meeting 11 | 1d | 2022-10-25 | 2022-10-25 | 22d | start no earlier than 2022-10-25 |
| 74 | 5.12 | Daily Meeting 12 | 1d | 2022-11-01 | 2022-11-01 | 17d | start no earlier than 2022-11-01 |
| 75 | 5.13 | Daily Meeting 13 | 1d | 2022-11-08 | 2022-11-08 | 12d | start no earlier than 2022-11-08 |
| 76 | 5.14 | Daily Meeting 14 | 1d | 2022-11-15 | 2022-11-15 | 7d | start no earlier than 2022-11-15 |
| 77 | 5.15 | Daily Meeting 15 | 1d | 2022-11-22 | 2022-11-22 | 2d | start no earlier than 2022-11-22 |
